# Plan - Schedule - ALPHA~484

How a schedule from MS Project changed from version to version. A marks actual dates.

## Version 1 (data date 2008-03-06, saved 2008-03-09)

Note of the change: * Updated database schema * Updated schedule/plan status

| ID | WBS | Task | Duration | Start | Finish | Predecessors | Complete | Total float |
| --- | --- | --- | --- | --- | --- | --- | --- | --- |
| 1 | 1 | **Image Upload/Attachment** | 2d | 2008-03-06 18:00 A | 2008-03-07 22:00 A |  | 100% |  |
| 2 |  | Display attach images & Auto-Resize large ones in ads | 0.5d | 2008-03-06 18:00 A | 2008-03-06 20:00 A |  | 100% |  |
| 3 |  | Implement "Upload" function - "Create Ads" page | 0.5d | 2008-03-06 20:00 A | 2008-03-06 22:00 A | 2 | 100% |  |
| 4 |  | Implement "Upload" function - "Edit Ads" page | 0.5d | 2008-03-07 18:00 A | 2008-03-07 20:00 A | 3 | 100% |  |
| 5 |  | Implement "Delete image" function - "Edit Ads" page | 0.5d | 2008-03-07 20:00 A | 2008-03-07 22:00 A | 4 | 100% |  |
| 6 |  | "Report Admin" Function | 1d | 2008-03-08 18:00 | 2008-03-08 22:00 | 1 |  | 1.75d |
| 10 | 3 | **SEO Support** | 1d | 2008-03-09 18:00 A | 2008-03-09 22:00 | 6 | 25% | 1.5d |
| 11 |  | View Ads, View Cat | 0.25d | 2008-03-09 18:00 A | 2008-03-09 19:00 A |  | 100% |  |
| 12 |  | Track Traffic (Google Analysis) | 0.5d | 2008-03-09 19:00 | 2008-03-09 21:00 | 11 |  | 1.5d |
| 13 |  | Buffer | 0.25d | 2008-03-09 21:00 | 2008-03-09 22:00 | 12 |  | 1.5d |
| 14 |  | Moderator & Ads Management | 1d | 2008-03-10 18:00 | 2008-03-10 22:00 | 10 |  | 1.5d |
| 18 | 5 | **Categorize Ads by Province/City** | 1d | 2008-03-11 18:00 A | 2008-03-11 22:00 A | 14 | 100% |  |
| 19 |  | New data field for ads - database | 0.25d | 2008-03-11 18:00 A | 2008-03-11 19:00 A |  | 100% |  |
| 20 |  | New data field for ads - "post new ads" form | 0.25d | 2008-03-11 19:00 A | 2008-03-11 20:00 A | 19 | 100% |  |
| 21 |  | New data field for ads - "edit ads" form | 0.25d | 2008-03-11 20:00 A | 2008-03-11 21:00 A | 20 | 100% |  |
| 22 |  | List of 64 cities/provinces of Vietnam | 0.25d | 2008-03-11 21:00 A | 2008-03-11 22:00 A | 21 | 100% |  |
| 23 |  | Mail Confirmation for Registration | 2d | 2008-03-12 18:00 | 2008-03-13 22:00 | 18 |  | 1.25d |
| 29 |  | CAPTCHA | 2d | 2008-03-14 18:00 | 2008-03-15 22:00 | 23 |  | 1.25d |
| 35 |  | Online Vietnamese Keyboard | 0.5d | 2008-03-16 18:00 | 2008-03-16 20:00 | 29 |  | 1.25d |
| 37 |  | Post to Category | 0.5d | 2008-03-16 20:00 | 2008-03-16 22:00 | 35 |  | 1.25d |
| 39 | 10 | **Categorize Ads by Buy/Sell** | 1d | 2008-03-17 18:00 A | 2008-03-17 22:00 | 37 | 75% | 0.5d |
| 40 |  | New data field for ads - database | 0.25d | 2008-03-17 18:00 A | 2008-03-17 19:00 A |  | 100% |  |
| 41 |  | New data field for ads - "post new ads" form | 0.25d | 2008-03-17 19:00 A | 2008-03-17 20:00 A | 40 | 100% |  |
| 42 |  | New data field for ads - "edit ads" form | 0.25d | 2008-03-17 20:00 A | 2008-03-17 21:00 A | 41 | 100% |  |
| 43 |  | Buffer | 0.25d | 2008-03-17 21:00 | 2008-03-17 22:00 | 42 |  | 0.25d |
| 44 | 11 | **Categorize Ads by Price** | 1d | 2008-03-18 18:00 A | 2008-03-18 22:00 | 39 | 75% | 0d |
| 45 |  | New data field for ads - database | 0.25d | 2008-03-18 18:00 A | 2008-03-18 19:00 A |  | 100% |  |
| 46 |  | New data field for ads - "post new ads" form | 0.25d | 2008-03-18 19:00 A | 2008-03-18 20:00 A | 45 | 100% |  |
| 47 |  | New data field for ads - "edit ads" form | 0.25d | 2008-03-18 20:00 A | 2008-03-18 21:00 A | 46 | 100% |  |
| 48 |  | Buffer | 0.25d | 2008-03-18 21:00 | 2008-03-18 22:00 | 47 |  | 0d |
| 49 |  | Watch Category | 1d | 2008-03-19 18:00 | 2008-03-19 22:00 | 44 |  | 0d |
| 53 |  | Search Ads | 3d | 2008-03-20 18:00 | 2008-03-22 22:00 | 49 |  | 0d |
| 62 |  | Thumbnail | 0.5d | 2008-03-23 18:00 | 2008-03-23 20:00 | 53 |  | 0d |
| 64 |  | Related Ads | 0.5d | 2008-03-23 20:00 | 2008-03-23 22:00 | 62 |  | 0d |
| 66 |  | Unconfirmed/Unclear tasks & Buffer | 5d | 2008-03-24 18:00 | 2008-03-28 22:00 | 64 |  | 0d |

## Version 2 (data date 2008-03-06, saved 2008-03-09)

Note of the change: * Updated database schema * Updated schedule/plan status

Last finish stays 2008-03-28. Complete tasks 15 → 21.

Added:

| ID | Task | Duration | Start | Finish | Predecessors | Resources |
| --- | --- | --- | --- | --- | --- | --- |
| 7 | Add "Report Admin" link to "View Ads" page & Report Form | 0.5d | 2008-03-08 18:00 | 2008-03-08 20:00 |  | Dev-NBThanh |
| 8 | List of "Reported Ads" in Admin section | 0.25d | 2008-03-08 20:00 | 2008-03-08 21:00 | 7 | Dev-NBThanh |
| 9 | Form for Admin to process "Reported Ads | 0.25d | 2008-03-08 21:00 | 2008-03-08 22:00 | 8 | Dev-NBThanh |
| 15 | New Moderator Group | 0.25d | 2008-03-10 18:00 A | 2008-03-10 19:00 A |  | Dev-NBThanh |
| 16 | Administrator & Moderator can delete ads | 0.25d | 2008-03-10 19:00 | 2008-03-10 20:00 | 15 | Dev-NBThanh |
| 17 | Buffer | 0.5d | 2008-03-10 20:00 | 2008-03-10 22:00 | 16 |  |
| 24 | New data field - database | 0.25d | 2008-03-12 18:00 A | 2008-03-12 19:00 A |  | Dev-NBThanh |
| 25 | Email Confirmation & Account Activation | 0.25d | 2008-03-12 19:00 A | 2008-03-12 20:00 A | 24 | Dev-NBThanh |
| 26 | Resent Confirmation Email (Form, Email & CAPTCHA) | 0.5d | 2008-03-12 20:00 | 2008-03-12 22:00 | 25 | Dev-NBThanh |
| 27 | Recheck account activation status at other places on site | 0.5d | 2008-03-13 18:00 A | 2008-03-13 20:00 A | 26 | Dev-NBThanh |
| 28 | Buffer | 0.5d | 2008-03-13 20:00 | 2008-03-13 22:00 | 27 |  |
| 30 | Implement CAPTCHA library | 1d | 2008-03-14 18:00 A | 2008-03-14 22:00 A |  | Dev-NBThanh |
| 31 | Embed CAPTCHA into "Register" page | 0.25d | 2008-03-15 18:00 A | 2008-03-15 19:00 A | 30 | Dev-NBThanh |
| 32 | Embed CAPTCHA into "Contact Poster" page | 0.25d | 2008-03-15 19:00 | 2008-03-15 20:00 | 31 | Dev-NBThanh |
| 33 | Embeded CAPTCHA into "Report Admin" page | 0.25d | 2008-03-15 20:00 | 2008-03-15 21:00 | 32 | Dev-NBThanh |
| 34 | Buffer | 0.25d | 2008-03-15 21:00 | 2008-03-15 22:00 | 33 |  |

Changed:

| ID | Task | Start | Complete | Total float |
| --- | --- | --- | --- | --- |
| 14 | **Moderator & Ads Management** | 2008-03-10 18:00 A | 0% → 25% | 1.5d → 18d |
| 23 | **Mail Confirmation for Registration** | 2008-03-12 18:00 A | 0% → 50% | 1.25d → 2.75d |
| 29 | **CAPTCHA** | 2008-03-14 18:00 A | 0% → 63% | 1.25d → 1.5d |

## Version 3 (data date 2008-03-06, saved 2008-03-13)

Note of the change: * Updated scheduling.

Last finish stays 2008-03-28. Complete tasks 21 → 24.

Added:

| ID | Task | Duration | Start | Finish | Resources |
| --- | --- | --- | --- | --- | --- |
| 36 | Install Online Vietnamese Keyboard on all forms | 0.5d | 2008-03-16 18:00 | 2008-03-16 20:00 | Dev-NBThanh |
| 38 | Link from category to post form | 0.5d | 2008-03-16 20:00 | 2008-03-16 22:00 | Dev-NBThanh |

Changed:

| ID | Task | Start | Finish | Complete | Total float |
| --- | --- | --- | --- | --- | --- |
| 23 | **Mail Confirmation for Registration** |  |  | 50% → 75% | 2.75d → 13.25d |
| 26 | Resent Confirmation Email (Form, Email & CAPTCHA) | 2008-03-12 20:00 A | 2008-03-12 22:00 A | 0% → 100% | 2.5d → none |
| 39 | **Categorize Ads by Buy/Sell** |  | 2008-03-17 22:00 A | 75% → 100% | 0.75d → none |
| 43 | Buffer | 2008-03-17 21:00 A | 2008-03-17 22:00 A | 0% → 100% | 0.25d → none |
| 44 | **Categorize Ads by Price** |  | 2008-03-18 22:00 A | 75% → 100% | 0d → none |
| 48 | Buffer | 2008-03-18 21:00 A | 2008-03-18 22:00 A | 0% → 100% | 0d → none |

## Version 4 (data date 2008-03-06, saved 2008-03-13)

Note of the change: * Updated scheduling.

Last finish stays 2008-03-28. Complete tasks 24 → 26.

Added:

| ID | Task | Duration | Start | Finish | Predecessors | Resources |
| --- | --- | --- | --- | --- | --- | --- |
| 50 | Allowed user to "watch" a category | 0.25d | 2008-03-19 18:00 | 2008-03-19 19:00 |  | Dev-NBThanh |
| 51 | Allowed user to "unwatch" a category | 0.25d | 2008-03-19 19:00 | 2008-03-19 20:00 | 50 | Dev-NBThanh |
| 52 | Send notification email when a new ads is posted | 0.5d | 2008-03-19 20:00 | 2008-03-19 22:00 | 51 | Dev-NBThanh |
| 54 | Search Form & Link & Result Page | 0.5d | 2008-03-20 18:00 | 2008-03-20 20:00 |  | Dev-NBThanh |
| 55 | By Category | 0.25d | 2008-03-20 20:00 | 2008-03-20 21:00 | 54 | Dev-NBThanh |
| 56 | By City/Province | 0.25d | 2008-03-20 21:00 | 2008-03-20 22:00 | 55 | Dev-NBThanh |
| 57 | By Buy/Sell | 0.25d | 2008-03-21 18:00 | 2008-03-21 19:00 | 56 | Dev-NBThanh |
| 58 | By Price | 0.25d | 2008-03-21 19:00 | 2008-03-21 20:00 | 57 | Dev-NBThanh |
| 59 | By Poster | 0.25d | 2008-03-21 20:00 | 2008-03-21 21:00 | 58 | Dev-NBThanh |
| 60 | "Same poster" link when view ads, points to "By Poster" search | 0.25d | 2008-03-21 21:00 | 2008-03-21 22:00 | 59 | Dev-NBThanh |
| 61 | By Keywords | 1d | 2008-03-22 18:00 | 2008-03-22 22:00 | 60 | Dev-NBThanh |
| 63 | Display thumbnail of ads' first image when viewing category | 0.5d | 2008-03-23 18:00 | 2008-03-23 20:00 |  | Dev-NBThanh |
| 65 | Display related ads (same Category, by Province, Buy/Sell type) when view an ads | 0.5d | 2008-03-23 20:00 | 2008-03-23 22:00 |  | Dev-NBThanh |

Changed:

| ID | Task | Start | Finish | Complete | Total float |
| --- | --- | --- | --- | --- | --- |
| 35 | **Online Vietnamese Keyboard** | 2008-03-16 18:00 A | 2008-03-16 20:00 A | 0% → 100% | 12d → none |
| 36 | Install Online Vietnamese Keyboard on all forms | 2008-03-16 18:00 A | 2008-03-16 20:00 A | 0% → 100% | 12d → none |
| 37 | **Post to Category** | 2008-03-16 20:00 A | 2008-03-16 22:00 A | 0% → 100% | 12d → none |
| 38 | Link from category to post form | 2008-03-16 20:00 A | 2008-03-16 22:00 A | 0% → 100% | 12d → none |

## Version 5 (data date 2008-03-06, saved 2008-03-19)

Last finish stays 2008-03-28. Complete tasks 26 → 28.

Changed:

| ID | Task | Start | Finish | Complete | Total float |
| --- | --- | --- | --- | --- | --- |
| 6 | **"Report Admin" Function** | 2008-03-08 18:00 A |  | 0% → 50% | 18.5d → 18.25d |
| 7 | Add "Report Admin" link to "View Ads" page & Report Form | 2008-03-08 18:00 A | 2008-03-08 20:00 A | 0% → 100% | 18.25d → none |
| 29 | **CAPTCHA** |  |  | 63% → 75% |  |
| 33 | Embeded CAPTCHA into "Report Admin" page | 2008-03-15 20:00 A | 2008-03-15 21:00 A | 0% → 100% | 13d → none |
