# Plan - Schedule - ALPHA

How a schedule from MS Project changed from version to version. A marks actual dates.

## Version 1 (data date 2008-03-02, saved 2008-03-02)

| ID | WBS | Task | Duration | Start | Finish | Predecessors | Total float |
| --- | --- | --- | --- | --- | --- | --- | --- |
| 1 | 1 | **Image Upload/Attachment** | 2d | 2008-03-03 18:00 | 2008-03-04 22:00 |  | 0.5d |
| 2 |  | Display attach images & Auto-Resize large ones in ads | 0.5d | 2008-03-03 18:00 | 2008-03-03 20:00 |  | 0d |
| 3 |  | Implement "Upload" function - "Create Ads" page | 0.5d | 2008-03-03 20:00 | 2008-03-03 22:00 | 2 | 2d |
| 4 |  | Implement "Upload" function - "Edit Ads" page | 0.5d | 2008-03-04 18:00 | 2008-03-04 20:00 | 3 | 0d |
| 5 |  | Implement "Delete image" function - "Edit Ads" page | 0.5d | 2008-03-04 20:00 | 2008-03-04 22:00 | 4 | 2d |
| 6 | 2 | **"Report Admin" Function** | 1d | 2008-03-05 18:00 | 2008-03-05 22:00 | 1 | 0.5d |
| 7 |  | Add "Report Admin" link to "View Ads" page & Report Form | 0.5d | 2008-03-05 18:00 | 2008-03-05 20:00 |  | 0d |
| 8 |  | List of "Reported Ads" in Admin section | 0.25d | 2008-03-05 20:00 | 2008-03-05 21:00 | 7 | 2d |
| 9 |  | Form for Admin to process "Reported Ads | 0.25d | 2008-03-05 21:00 | 2008-03-05 22:00 | 8 | 2d |
| 10 | 3 | **SEO Support** | 1d | 2008-03-06 18:00 | 2008-03-06 22:00 | 6 | 0.5d |
| 11 |  | View Ads, View Cat | 0.25d | 2008-03-06 18:00 | 2008-03-06 19:00 |  | 0d |
| 12 |  | Track Traffic (Google Analysis) | 0.5d | 2008-03-06 19:00 | 2008-03-06 21:00 | 11 | 0d |
| 13 |  | Buffer | 0.25d | 2008-03-06 21:00 | 2008-03-06 22:00 | 12 | 0.5d |
| 14 | 4 | **Moderator & Ads Management** | 1d | 2008-03-07 18:00 | 2008-03-07 22:00 | 10 | 0.5d |
| 15 |  | New Moderator Group | 0.25d | 2008-03-07 18:00 | 2008-03-07 19:00 |  | 0d |
| 16 |  | Administrator & Moderator can delete ads | 0.25d | 2008-03-07 19:00 | 2008-03-07 20:00 | 15 | 0d |
| 17 |  | Buffer | 0.5d | 2008-03-07 20:00 | 2008-03-07 22:00 | 16 | 0.5d |
| 18 | 5 | **Categorize Ads by Province/City** | 1d | 2008-03-08 18:00 | 2008-03-08 22:00 | 14 | 0.5d |
| 19 |  | New data field for ads - database | 0.25d | 2008-03-08 18:00 | 2008-03-08 19:00 |  | 0d |
| 20 |  | New data field for ads - "post new ads" form | 0.25d | 2008-03-08 19:00 | 2008-03-08 20:00 | 19 | 0d |
| 21 |  | New data field for ads - "edit ads" form | 0.25d | 2008-03-08 20:00 | 2008-03-08 21:00 | 20 | 0d |
| 22 |  | List of 64 cities/provinces of Vietnam | 0.25d | 2008-03-08 21:00 | 2008-03-08 22:00 | 21 | 0d |
| 23 | 6 | **Mail Confirmation for Registration** | 2d | 2008-03-09 18:00 | 2008-03-11 10:00 | 18 | 0d |
| 24 |  | New data field - database | 0.25d | 2008-03-09 18:00 | 2008-03-09 19:00 |  | 0d |
| 25 |  | Email Confirmation & Account Activation | 0.25d | 2008-03-09 19:00 | 2008-03-09 20:00 | 24 | 0d |
| 26 |  | Resent Confirmation Email (Form, Email & CAPTCHA) | 0.5d | 2008-03-09 20:00 | 2008-03-09 22:00 | 25 | 2d |
| 27 |  | Recheck account activation status at other places on site | 0.5d | 2008-03-10 18:00 | 2008-03-10 20:00 | 26 | 0d |
| 28 |  | Buffer | 0.5d | 2008-03-11 08:00 | 2008-03-11 10:00 | 27 | 1.5d |
| 29 | 7 | **CAPTCHA** | 2d | 2008-03-11 18:00 | 2008-03-13 09:00 | 23 | 0d |
| 30 |  | Implement CAPTCHA library | 1d | 2008-03-11 18:00 | 2008-03-11 22:00 |  | 0d |
| 31 |  | Embed CAPTCHA into "Register" page | 0.25d | 2008-03-12 18:00 | 2008-03-12 19:00 | 30 | 0d |
| 32 |  | Embed CAPTCHA into "Contact Poster" page | 0.25d | 2008-03-12 19:00 | 2008-03-12 20:00 | 31 | 0d |
| 33 |  | Embeded CAPTCHA into "Report Admin" page | 0.25d | 2008-03-12 20:00 | 2008-03-12 21:00 | 32 | 0d |
| 34 |  | Buffer | 0.25d | 2008-03-13 08:00 | 2008-03-13 09:00 | 33 | 1.75d |
| 35 | 8 | **Online Vietnamese Keyboard** | 0.5d | 2008-03-13 18:00 | 2008-03-13 20:00 | 29 | 0d |
| 36 |  | Install Online Vietnamese Keyboard on all forms | 0.5d | 2008-03-13 18:00 | 2008-03-13 20:00 |  | 0d |
| 37 | 9 | **Post to Category** | 0.5d | 2008-03-13 20:00 | 2008-03-13 22:00 | 35 | 0d |
| 38 |  | Link from category to post form | 0.5d | 2008-03-13 20:00 | 2008-03-13 22:00 |  | 0d |
| 39 | 10 | **Categorize Ads by Buy/Sell** | 1d | 2008-03-14 18:00 | 2008-03-14 22:00 | 37 | 0d |
| 40 |  | New data field for ads - database | 0.25d | 2008-03-14 18:00 | 2008-03-14 19:00 |  | 0d |
| 41 |  | New data field for ads - "post new ads" form | 0.25d | 2008-03-14 19:00 | 2008-03-14 20:00 | 40 | 0d |
| 42 |  | New data field for ads - "edit ads" form | 0.25d | 2008-03-14 20:00 | 2008-03-14 21:00 | 41 | 0d |
| 43 |  | Buffer | 0.25d | 2008-03-14 21:00 | 2008-03-14 22:00 | 42 | 0d |
| 44 | 11 | **Categorize Ads by Price** | 1d | 2008-03-15 18:00 | 2008-03-15 22:00 | 39 | 0d |
| 45 |  | New data field for ads - database | 0.25d | 2008-03-15 18:00 | 2008-03-15 19:00 |  | 0d |
| 46 |  | New data field for ads - "post new ads" form | 0.25d | 2008-03-15 19:00 | 2008-03-15 20:00 | 45 | 0d |
| 47 |  | New data field for ads - "edit ads" form | 0.25d | 2008-03-15 20:00 | 2008-03-15 21:00 | 46 | 0d |
| 48 |  | Buffer | 0.25d | 2008-03-15 21:00 | 2008-03-15 22:00 | 47 | 0d |
| 49 | 12 | **Watch Category** | 1d | 2008-03-16 18:00 | 2008-03-16 22:00 | 44 | 0d |
| 50 |  | Allowed user to "watch" a category | 0.25d | 2008-03-16 18:00 | 2008-03-16 19:00 |  | 0d |
| 51 |  | Allowed user to "unwatch" a category | 0.25d | 2008-03-16 19:00 | 2008-03-16 20:00 | 50 | 0d |
| 52 |  | Send notification email when a new ads is posted | 0.5d | 2008-03-16 20:00 | 2008-03-16 22:00 | 51 | 0d |
| 53 | 13 | **Search Ads** | 2d | 2008-03-17 08:00 | 2008-03-19 09:00 | 49 | 0d |
| 54 |  | Search Form & Link & Result Page | 0.5d | 2008-03-17 08:00 | 2008-03-17 10:00 |  | 1.5d |
| 55 |  | By Category | 0.25d | 2008-03-17 18:00 | 2008-03-17 19:00 | 54 | 0d |
| 56 |  | By City/Province | 0.25d | 2008-03-17 19:00 | 2008-03-17 20:00 | 55 | 0d |
| 57 |  | By Buy/Sell | 0.25d | 2008-03-17 20:00 | 2008-03-17 21:00 | 56 | 2d |
| 58 |  | By Price | 0.25d | 2008-03-17 20:00 | 2008-03-17 21:00 | 56 | 0d |
| 59 |  | By Keywords | 1d | 2008-03-17 21:00 | 2008-03-18 21:00 | 58 | 0d |
| 60 |  | Buffer | 0.25d | 2008-03-19 08:00 | 2008-03-19 09:00 | 59 | 1.75d |
| 61 | 14 | **Thumbnail** | 0.5d | 2008-03-19 18:00 | 2008-03-19 20:00 | 53 | 0d |
| 62 |  | Display thumbnail of ads' first image when viewing category | 0.5d | 2008-03-19 18:00 | 2008-03-19 20:00 |  | 0d |
| 63 |  | Unconfirmed/Unclear tasks & Buffer | 5d | 2008-03-19 20:00 | 2008-03-24 20:00 | 61 | 0d |

## Version 2 (data date 2008-03-06, saved 2008-03-06)

Last finish 2008-03-24 → 2008-03-28 (+4d).

Added:

| ID | Task | Duration | Start | Finish | Predecessors | Resources |
| --- | --- | --- | --- | --- | --- | --- |
| 59 | By Poster | 0.25d | 2008-03-21 20:00 | 2008-03-21 21:00 | 58 | Dev-NBThanh |
| 60 | "Same poster" link when view ads, points to "By Poster" search | 0.25d | 2008-03-21 21:00 | 2008-03-21 22:00 | 59 | Dev-NBThanh |
| 64 | **Related Ads** | 0.5d | 2008-03-23 20:00 | 2008-03-23 22:00 | 62 |  |
| 65 | Display related ads (same Category, by Province, Buy/Sell type) when view an ads | 0.5d | 2008-03-23 20:00 | 2008-03-23 22:00 |  | Dev-NBThanh |

Removed: 60 Buffer

Changed:

| ID | Task | Start | Finish | Duration | Complete | Total float | Predecessors | Other |
| --- | --- | --- | --- | --- | --- | --- | --- | --- |
| 1 | **Image Upload/Attachment** | 2008-03-03 18:00 → 2008-03-06 18:00 A (+3d) | 2008-03-04 22:00 → 2008-03-07 22:00 (+3d) |  | 0% → 13% | 0.5d → 0.38d |  |  |
| 2 | Display attach images & Auto-Resize large ones in ads | 2008-03-03 18:00 → 2008-03-06 18:00 A (+3d) | 2008-03-03 20:00 → 2008-03-06 20:00 (+3d) |  | 0% → 50% | 0d → 0.38d |  |  |
| 3 | Implement "Upload" function - "Create Ads" page | 2008-03-03 20:00 → 2008-03-06 20:00 (+3d) | 2008-03-03 22:00 → 2008-03-06 22:00 (+3d) |  |  | 2d → 0.38d |  |  |
| 4 | Implement "Upload" function - "Edit Ads" page | 2008-03-04 18:00 → 2008-03-07 18:00 (+3d) | 2008-03-04 20:00 → 2008-03-07 20:00 (+3d) |  |  | 0d → 0.38d |  |  |
| 5 | Implement "Delete image" function - "Edit Ads" page | 2008-03-04 20:00 → 2008-03-07 20:00 (+3d) | 2008-03-04 22:00 → 2008-03-07 22:00 (+3d) |  |  | 2d → 0.38d |  |  |
| 6 | **"Report Admin" Function** | 2008-03-05 18:00 → 2008-03-08 18:00 (+3d) | 2008-03-05 22:00 → 2008-03-08 22:00 (+3d) |  |  | 0.5d → 0.38d |  |  |
| 7 | Add "Report Admin" link to "View Ads" page & Report Form | 2008-03-05 18:00 → 2008-03-08 18:00 (+3d) | 2008-03-05 20:00 → 2008-03-08 20:00 (+3d) |  |  | 0d → 0.38d |  |  |
| 8 | List of "Reported Ads" in Admin section | 2008-03-05 20:00 → 2008-03-08 20:00 (+3d) | 2008-03-05 21:00 → 2008-03-08 21:00 (+3d) |  |  | 2d → 0.38d |  |  |
| 9 | Form for Admin to process "Reported Ads | 2008-03-05 21:00 → 2008-03-08 21:00 (+3d) | 2008-03-05 22:00 → 2008-03-08 22:00 (+3d) |  |  | 2d → 0.38d |  |  |
| 10 | **SEO Support** | 2008-03-06 18:00 → 2008-03-09 18:00 A (+3d) | 2008-03-06 22:00 → 2008-03-09 22:00 (+3d) |  | 0% → 13% | 0.5d → 0d |  |  |
| 11 | View Ads, View Cat | 2008-03-06 18:00 → 2008-03-09 18:00 A (+3d) | 2008-03-06 19:00 → 2008-03-09 19:00 (+3d) |  | 0% → 50% |  |  |  |
| 12 | Track Traffic (Google Analysis) | 2008-03-06 19:00 → 2008-03-09 19:00 (+3d) | 2008-03-06 21:00 → 2008-03-09 21:00 (+3d) |  |  |  |  |  |
| 13 | Buffer | 2008-03-06 21:00 → 2008-03-09 21:00 (+3d) | 2008-03-06 22:00 → 2008-03-09 22:00 (+3d) |  |  | 0.5d → 0d |  |  |
| 14 | **Moderator & Ads Management** | 2008-03-07 18:00 → 2008-03-10 18:00 (+3d) | 2008-03-07 22:00 → 2008-03-10 22:00 (+3d) |  |  | 0.5d → 0d |  |  |
| 15 | New Moderator Group | 2008-03-07 18:00 → 2008-03-10 18:00 (+3d) | 2008-03-07 19:00 → 2008-03-10 19:00 (+3d) |  |  |  |  |  |
| 16 | Administrator & Moderator can delete ads | 2008-03-07 19:00 → 2008-03-10 19:00 (+3d) | 2008-03-07 20:00 → 2008-03-10 20:00 (+3d) |  |  |  |  |  |
| 17 | Buffer | 2008-03-07 20:00 → 2008-03-10 20:00 (+3d) | 2008-03-07 22:00 → 2008-03-10 22:00 (+3d) |  |  | 0.5d → 0d |  |  |
| 18 | **Categorize Ads by Province/City** | 2008-03-08 18:00 → 2008-03-11 18:00 (+3d) | 2008-03-08 22:00 → 2008-03-11 22:00 (+3d) |  |  | 0.5d → 0d |  |  |
| 19 | New data field for ads - database | 2008-03-08 18:00 → 2008-03-11 18:00 (+3d) | 2008-03-08 19:00 → 2008-03-11 19:00 (+3d) |  |  |  |  |  |
| 20 | New data field for ads - "post new ads" form | 2008-03-08 19:00 → 2008-03-11 19:00 (+3d) | 2008-03-08 20:00 → 2008-03-11 20:00 (+3d) |  |  |  |  |  |
| 21 | New data field for ads - "edit ads" form | 2008-03-08 20:00 → 2008-03-11 20:00 (+3d) | 2008-03-08 21:00 → 2008-03-11 21:00 (+3d) |  |  |  |  |  |
| 22 | List of 64 cities/provinces of Vietnam | 2008-03-08 21:00 → 2008-03-11 21:00 (+3d) | 2008-03-08 22:00 → 2008-03-11 22:00 (+3d) |  |  |  |  |  |
| 23 | **Mail Confirmation for Registration** | 2008-03-09 18:00 → 2008-03-12 18:00 (+3d) | 2008-03-11 10:00 → 2008-03-13 22:00 (+2d) |  |  |  |  |  |
| 24 | New data field - database | 2008-03-09 18:00 → 2008-03-12 18:00 (+3d) | 2008-03-09 19:00 → 2008-03-12 19:00 (+3d) |  |  |  |  |  |
| 25 | Email Confirmation & Account Activation | 2008-03-09 19:00 → 2008-03-12 19:00 (+3d) | 2008-03-09 20:00 → 2008-03-12 20:00 (+3d) |  |  |  |  |  |
| 26 | Resent Confirmation Email (Form, Email & CAPTCHA) | 2008-03-09 20:00 → 2008-03-12 20:00 (+3d) | 2008-03-09 22:00 → 2008-03-12 22:00 (+3d) |  |  | 2d → 0d |  |  |
| 27 | Recheck account activation status at other places on site | 2008-03-10 18:00 → 2008-03-13 18:00 (+3d) | 2008-03-10 20:00 → 2008-03-13 20:00 (+3d) |  |  |  |  |  |
| 28 | Buffer | 2008-03-11 08:00 → 2008-03-13 20:00 (+2d) | 2008-03-11 10:00 → 2008-03-13 22:00 (+2d) |  |  | 1.5d → 0d |  |  |
| 29 | **CAPTCHA** | 2008-03-11 18:00 → 2008-03-14 18:00 (+3d) | 2008-03-13 09:00 → 2008-03-15 22:00 (+2d) |  |  |  |  |  |
| 30 | Implement CAPTCHA library | 2008-03-11 18:00 → 2008-03-14 18:00 (+3d) | 2008-03-11 22:00 → 2008-03-14 22:00 (+3d) |  |  |  |  |  |
| 31 | Embed CAPTCHA into "Register" page | 2008-03-12 18:00 → 2008-03-15 18:00 (+3d) | 2008-03-12 19:00 → 2008-03-15 19:00 (+3d) |  |  |  |  |  |
| 32 | Embed CAPTCHA into "Contact Poster" page | 2008-03-12 19:00 → 2008-03-15 19:00 (+3d) | 2008-03-12 20:00 → 2008-03-15 20:00 (+3d) |  |  |  |  |  |
| 33 | Embeded CAPTCHA into "Report Admin" page | 2008-03-12 20:00 → 2008-03-15 20:00 (+3d) | 2008-03-12 21:00 → 2008-03-15 21:00 (+3d) |  |  |  |  |  |
| 34 | Buffer | 2008-03-13 08:00 → 2008-03-15 21:00 (+2d) | 2008-03-13 09:00 → 2008-03-15 22:00 (+2d) |  |  | 1.75d → 0d |  |  |
| 35 | **Online Vietnamese Keyboard** | 2008-03-13 18:00 → 2008-03-16 18:00 (+3d) | 2008-03-13 20:00 → 2008-03-16 20:00 (+3d) |  |  |  |  |  |
| 36 | Install Online Vietnamese Keyboard on all forms | 2008-03-13 18:00 → 2008-03-16 18:00 (+3d) | 2008-03-13 20:00 → 2008-03-16 20:00 (+3d) |  |  |  |  |  |
| 37 | **Post to Category** | 2008-03-13 20:00 → 2008-03-16 20:00 (+3d) | 2008-03-13 22:00 → 2008-03-16 22:00 (+3d) |  |  |  |  |  |
| 38 | Link from category to post form | 2008-03-13 20:00 → 2008-03-16 20:00 (+3d) | 2008-03-13 22:00 → 2008-03-16 22:00 (+3d) |  |  |  |  |  |
| 39 | **Categorize Ads by Buy/Sell** | 2008-03-14 18:00 → 2008-03-17 18:00 (+3d) | 2008-03-14 22:00 → 2008-03-17 22:00 (+3d) |  |  |  |  |  |
| 40 | New data field for ads - database | 2008-03-14 18:00 → 2008-03-17 18:00 (+3d) | 2008-03-14 19:00 → 2008-03-17 19:00 (+3d) |  |  |  |  |  |
| 41 | New data field for ads - "post new ads" form | 2008-03-14 19:00 → 2008-03-17 19:00 (+3d) | 2008-03-14 20:00 → 2008-03-17 20:00 (+3d) |  |  |  |  |  |
| 42 | New data field for ads - "edit ads" form | 2008-03-14 20:00 → 2008-03-17 20:00 (+3d) | 2008-03-14 21:00 → 2008-03-17 21:00 (+3d) |  |  |  |  |  |
| 43 | Buffer | 2008-03-14 21:00 → 2008-03-17 21:00 (+3d) | 2008-03-14 22:00 → 2008-03-17 22:00 (+3d) |  |  |  |  |  |
| 44 | **Categorize Ads by Price** | 2008-03-15 18:00 → 2008-03-18 18:00 (+3d) | 2008-03-15 22:00 → 2008-03-18 22:00 (+3d) |  |  |  |  |  |
| 45 | New data field for ads - database | 2008-03-15 18:00 → 2008-03-18 18:00 (+3d) | 2008-03-15 19:00 → 2008-03-18 19:00 (+3d) |  |  |  |  |  |
| 46 | New data field for ads - "post new ads" form | 2008-03-15 19:00 → 2008-03-18 19:00 (+3d) | 2008-03-15 20:00 → 2008-03-18 20:00 (+3d) |  |  |  |  |  |
| 47 | New data field for ads - "edit ads" form | 2008-03-15 20:00 → 2008-03-18 20:00 (+3d) | 2008-03-15 21:00 → 2008-03-18 21:00 (+3d) |  |  |  |  |  |
| 48 | Buffer | 2008-03-15 21:00 → 2008-03-18 21:00 (+3d) | 2008-03-15 22:00 → 2008-03-18 22:00 (+3d) |  |  |  |  |  |
| 49 | **Watch Category** | 2008-03-16 18:00 → 2008-03-19 18:00 (+3d) | 2008-03-16 22:00 → 2008-03-19 22:00 (+3d) |  |  |  |  |  |
| 50 | Allowed user to "watch" a category | 2008-03-16 18:00 → 2008-03-19 18:00 (+3d) | 2008-03-16 19:00 → 2008-03-19 19:00 (+3d) |  |  |  |  |  |
| 51 | Allowed user to "unwatch" a category | 2008-03-16 19:00 → 2008-03-19 19:00 (+3d) | 2008-03-16 20:00 → 2008-03-19 20:00 (+3d) |  |  |  |  |  |
| 52 | Send notification email when a new ads is posted | 2008-03-16 20:00 → 2008-03-19 20:00 (+3d) | 2008-03-16 22:00 → 2008-03-19 22:00 (+3d) |  |  |  |  |  |
| 53 | **Search Ads** | 2008-03-17 08:00 → 2008-03-20 18:00 (+3d) | 2008-03-19 09:00 → 2008-03-22 22:00 (+3d) | 2d → 3d |  |  |  |  |
| 54 | Search Form & Link & Result Page | 2008-03-17 08:00 → 2008-03-20 18:00 (+3d) | 2008-03-17 10:00 → 2008-03-20 20:00 (+3d) |  |  | 1.5d → 0d |  | resources none → Dev-NBThanh |
| 55 | By Category | 2008-03-17 18:00 → 2008-03-20 20:00 (+3d) | 2008-03-17 19:00 → 2008-03-20 21:00 (+3d) |  |  |  |  |  |
| 56 | By City/Province | 2008-03-17 19:00 → 2008-03-20 21:00 (+3d) | 2008-03-17 20:00 → 2008-03-20 22:00 (+3d) |  |  |  |  |  |
| 57 | By Buy/Sell | 2008-03-17 20:00 → 2008-03-21 18:00 (+4d) | 2008-03-17 21:00 → 2008-03-21 19:00 (+4d) |  |  | 2d → 0d |  |  |
| 58 | By Price | 2008-03-17 20:00 → 2008-03-21 19:00 (+4d) | 2008-03-17 21:00 → 2008-03-21 20:00 (+4d) |  |  |  | 56 → 57 |  |
| 61 | By Keywords | 2008-03-17 21:00 → 2008-03-22 18:00 (+5d) | 2008-03-18 21:00 → 2008-03-22 22:00 (+4d) |  |  |  | 58 → 60 |  |
| 62 | **Thumbnail** | 2008-03-19 18:00 → 2008-03-23 18:00 (+4d) | 2008-03-19 20:00 → 2008-03-23 20:00 (+4d) |  |  |  |  |  |
| 63 | Display thumbnail of ads' first image when viewing category | 2008-03-19 18:00 → 2008-03-23 18:00 (+4d) | 2008-03-19 20:00 → 2008-03-23 20:00 (+4d) |  |  |  |  |  |
| 66 | Unconfirmed/Unclear tasks & Buffer | 2008-03-19 20:00 → 2008-03-24 18:00 (+5d) | 2008-03-24 20:00 → 2008-03-28 22:00 (+4d) |  |  |  | 62 → 64 |  |

## Version 3 (data date 2008-03-06, saved 2008-03-25)

Note of the change: * Updated db schema * Updated plan & schedule

Last finish stays 2008-03-28. Complete tasks 0 → 36.

Changed:

| ID | Task | Start | Finish | Complete | Total float |
| --- | --- | --- | --- | --- | --- |
| 1 | **Image Upload/Attachment** |  | 2008-03-07 22:00 A | 13% → 100% | 0.38d → none |
| 2 | Display attach images & Auto-Resize large ones in ads |  | 2008-03-06 20:00 A | 50% → 100% | 0.38d → none |
| 3 | Implement "Upload" function - "Create Ads" page | 2008-03-06 20:00 A | 2008-03-06 22:00 A | 0% → 100% | 0.38d → none |
| 4 | Implement "Upload" function - "Edit Ads" page | 2008-03-07 18:00 A | 2008-03-07 20:00 A | 0% → 100% | 0.38d → none |
| 5 | Implement "Delete image" function - "Edit Ads" page | 2008-03-07 20:00 A | 2008-03-07 22:00 A | 0% → 100% | 0.38d → none |
| 6 | **"Report Admin" Function** | 2008-03-08 18:00 A | 2008-03-08 22:00 A | 0% → 100% | 0.38d → none |
| 7 | Add "Report Admin" link to "View Ads" page & Report Form | 2008-03-08 18:00 A | 2008-03-08 20:00 A | 0% → 100% | 0.38d → none |
| 8 | List of "Reported Ads" in Admin section | 2008-03-08 20:00 A | 2008-03-08 21:00 A | 0% → 100% | 0.38d → none |
| 9 | Form for Admin to process "Reported Ads | 2008-03-08 21:00 A | 2008-03-08 22:00 A | 0% → 100% | 0.38d → none |
| 10 | **SEO Support** |  |  | 13% → 25% | 0d → 19d |
| 11 | View Ads, View Cat |  | 2008-03-09 19:00 A | 50% → 100% | 0d → none |
| 14 | **Moderator & Ads Management** | 2008-03-10 18:00 A | 2008-03-10 22:00 A | 0% → 100% | 0d → none |
| 15 | New Moderator Group | 2008-03-10 18:00 A | 2008-03-10 19:00 A | 0% → 100% | 0d → none |
| 16 | Administrator & Moderator can delete ads | 2008-03-10 19:00 A | 2008-03-10 20:00 A | 0% → 100% | 0d → none |
| 17 | Buffer | 2008-03-10 20:00 A | 2008-03-10 22:00 A | 0% → 100% | 0d → none |
| 18 | **Categorize Ads by Province/City** | 2008-03-11 18:00 A | 2008-03-11 22:00 A | 0% → 100% | 0d → none |
| 19 | New data field for ads - database | 2008-03-11 18:00 A | 2008-03-11 19:00 A | 0% → 100% | 0d → none |
| 20 | New data field for ads - "post new ads" form | 2008-03-11 19:00 A | 2008-03-11 20:00 A | 0% → 100% | 0d → none |
| 21 | New data field for ads - "edit ads" form | 2008-03-11 20:00 A | 2008-03-11 21:00 A | 0% → 100% | 0d → none |
| 22 | List of 64 cities/provinces of Vietnam | 2008-03-11 21:00 A | 2008-03-11 22:00 A | 0% → 100% | 0d → none |
| 23 | **Mail Confirmation for Registration** | 2008-03-12 18:00 A | 2008-03-13 22:00 A | 0% → 100% | 0d → none |
| 24 | New data field - database | 2008-03-12 18:00 A | 2008-03-12 19:00 A | 0% → 100% | 0d → none |
| 25 | Email Confirmation & Account Activation | 2008-03-12 19:00 A | 2008-03-12 20:00 A | 0% → 100% | 0d → none |
| 26 | Resent Confirmation Email (Form, Email & CAPTCHA) | 2008-03-12 20:00 A | 2008-03-12 22:00 A | 0% → 100% | 0d → none |
| 27 | Recheck account activation status at other places on site | 2008-03-13 18:00 A | 2008-03-13 20:00 A | 0% → 100% | 0d → none |
| 28 | Buffer | 2008-03-13 20:00 A | 2008-03-13 22:00 A | 0% → 100% | 0d → none |
| 29 | **CAPTCHA** | 2008-03-14 18:00 A |  | 0% → 75% | 0d → 13d |
| 30 | Implement CAPTCHA library | 2008-03-14 18:00 A | 2008-03-14 22:00 A | 0% → 100% | 0d → none |
| 31 | Embed CAPTCHA into "Register" page | 2008-03-15 18:00 A | 2008-03-15 19:00 A | 0% → 100% | 0d → none |
| 33 | Embeded CAPTCHA into "Report Admin" page | 2008-03-15 20:00 A | 2008-03-15 21:00 A | 0% → 100% | 0d → none |
| 35 | **Online Vietnamese Keyboard** | 2008-03-16 18:00 A | 2008-03-16 20:00 A | 0% → 100% | 0d → none |
| 36 | Install Online Vietnamese Keyboard on all forms | 2008-03-16 18:00 A | 2008-03-16 20:00 A | 0% → 100% | 0d → none |
| 37 | **Post to Category** | 2008-03-16 20:00 A | 2008-03-16 22:00 A | 0% → 100% | 0d → none |
| 38 | Link from category to post form | 2008-03-16 20:00 A | 2008-03-16 22:00 A | 0% → 100% | 0d → none |
| 39 | **Categorize Ads by Buy/Sell** | 2008-03-17 18:00 A | 2008-03-17 22:00 A | 0% → 100% | 0d → none |
| 40 | New data field for ads - database | 2008-03-17 18:00 A | 2008-03-17 19:00 A | 0% → 100% | 0d → none |
| 41 | New data field for ads - "post new ads" form | 2008-03-17 19:00 A | 2008-03-17 20:00 A | 0% → 100% | 0d → none |
| 42 | New data field for ads - "edit ads" form | 2008-03-17 20:00 A | 2008-03-17 21:00 A | 0% → 100% | 0d → none |
| 43 | Buffer | 2008-03-17 21:00 A | 2008-03-17 22:00 A | 0% → 100% | 0d → none |
| 44 | **Categorize Ads by Price** | 2008-03-18 18:00 A | 2008-03-18 22:00 A | 0% → 100% | 0d → none |
| 45 | New data field for ads - database | 2008-03-18 18:00 A | 2008-03-18 19:00 A | 0% → 100% | 0d → none |
| 46 | New data field for ads - "post new ads" form | 2008-03-18 19:00 A | 2008-03-18 20:00 A | 0% → 100% | 0d → none |
| 47 | New data field for ads - "edit ads" form | 2008-03-18 20:00 A | 2008-03-18 21:00 A | 0% → 100% | 0d → none |
| 48 | Buffer | 2008-03-18 21:00 A | 2008-03-18 22:00 A | 0% → 100% | 0d → none |
| 49 | **Watch Category** | 2008-03-19 18:00 A | 2008-03-19 22:00 A | 0% → 100% | 0d → none |
| 50 | Allowed user to "watch" a category | 2008-03-19 18:00 A | 2008-03-19 19:00 A | 0% → 100% | 0d → none |
| 51 | Allowed user to "unwatch" a category | 2008-03-19 19:00 A | 2008-03-19 20:00 A | 0% → 100% | 0d → none |
| 52 | Send notification email when a new ads is posted | 2008-03-19 20:00 A | 2008-03-19 22:00 A | 0% → 100% | 0d → none |
